# group-ros

Schedule from MS Project, 2015-07-22 to 2016-11-22, A marks actual dates.

## Calendars

- 标准: Mon-Fri 08:00-12:00, 13:00-17:00; Sat-Sun off. Exceptions (off unless hours are given): 2015-09-06 08:00-12:00, 13:00-17:00, 2016-02-14 08:00-12:00, 13:00-17:00, 2016-09-15 to 2016-09-16 (中秋), 2016-09-18 08:00-12:00, 13:00-17:00, 2016-10-03 to 2016-10-07 (国庆), 2016-10-08 08:00-12:00, 13:00-17:00 (国庆调假).

## Resources

| Resource |
| --- |
| 激光铲车项目 |
| plc |
| 加入plc控制器 |
| 驱动器连接 |
| plc控制器 |
| 驱动器连接数据 |
| 连接plc控制器 |
| 仇隽挺 |
| 陈新春 |
| 张邺 |
| 韩立芹 |
| 陈豪 |
| 潘力澜 |
| 陆亚辉 |
| 吴兵 |
| 秦伟明 |

## Schedule

| ID | WBS | Task | Type | Duration | Start | Finish | Predecessors | Complete | Constraint |
| --- | --- | --- | --- | --- | --- | --- | --- | --- | --- |
| 1 | 1 | **lidar_mrpt** |  | 24d | 2015-07-22 A | 2015-08-25 A |  | 100% |  |
| 2 | 1.1 | uwb_localization-test |  | 0.5d | 2015-07-22 A | 2015-07-22 A |  | 100% | start no earlier than 2015-07-22 |
| 3 | 1.2 | hokuyo_laser_scan |  | 2d | 2015-07-22 A | 2015-07-24 A |  | 100% | start no earlier than 2015-07-22 |
| 4 | 1.3 | communication-config |  | 1d | 2015-07-24 A | 2015-07-27 A | 3 | 100% | start no earlier than 2015-07-24 |
| 5 | 1.4 | mrpt-tutorial |  | 2d | 2015-07-27 A | 2015-07-29 A | 4 | 100% | start no earlier than 2015-07-27 |
| 6 | 1.5 | mrpt-slam |  | 8d | 2015-07-29 A | 2015-08-10 A | 5 | 100% | finish no earlier than 2015-08-07 |
| 7 | 1.6 | mrpt-navigation |  | 5d | 2015-08-10 A | 2015-08-17 A | 6 | 100% | start no earlier than 2015-08-10 |
| 8 | 1.7 | chassis-remake |  | 5d | 2015-08-17 A | 2015-08-24 A |  | 100% | start no earlier than 2015-08-17 |
| 9 | 1.8 | mrpt-recovery |  | 6d | 2015-08-17 A | 2015-08-25 A | 7 | 100% | start no earlier than 2015-08-17 |
| 10 | 2 | **lidar_ros** |  | 42.88d | 2015-08-20 A | 2015-10-16 A |  | 100% |  |
| 11 | 2.1 | ros-tutorial |  | 6d | 2015-08-20 A | 2015-08-28 A |  | 100% | finish no earlier than 2015-08-27 |
| 12 | 2.2 | hokuyo_urg |  | 2d | 2015-08-28 A | 2015-09-01 A | 11 | 100% | start no earlier than 2015-08-27 |
| 13 | 2.3 | hector_slam |  | 3d | 2015-08-31 A | 2015-09-03 A |  | 100% | finish no earlier than 2015-09-02 |
| 14 | 2.4 | hector_navigation |  | 4d | 2015-09-01 A | 2015-09-06 A |  | 100% | finish no earlier than 2015-09-06 |
| 15 | 2.5 | joystick |  | 5d | 2015-09-01 A | 2015-09-07 A |  | 100% | finish no earlier than 2015-09-06 |
| 16 | 2.6 | navigation |  | 2d | 2015-09-06 A | 2015-09-08 A |  | 100% | finish no earlier than 2015-09-08 |
| 17 | 2.7 | noise_filter |  | 2d | 2015-09-08 A | 2015-09-10 A |  | 100% | start no earlier than 2015-09-08 |
| 18 | 2.8 | costmap_obstacle |  | 2d | 2015-09-11 A | 2015-09-14 A | 17 | 100% | finish no earlier than 2015-09-14 |
| 19 | 2.9 | map_server |  | 4d | 2015-09-15 A | 2015-09-18 A | 18 | 100% |  |
| 20 | 2.10 | rviz_plugin |  | 6d | 2015-09-21 A | 2015-09-28 A | 19 | 100% |  |
| 21 | 2.11 | timing_check |  | 5d | 2015-09-18 A | 2015-09-25 A |  | 100% | start no earlier than 2015-09-18 |
| 22 | 2.12 | amcl_kidnap |  | 9d | 2015-09-29 A | 2015-10-09 A | 20 | 100% |  |
| 23 | 2.13 | exploration |  | 9d | 2015-09-29 A | 2015-10-09 A | 20 | 100% |  |
| 24 | 2.14 | code_management |  | 5d | 2015-10-12 A | 2015-10-16 A | 23 | 100% | start no earlier than 2015-09-08 |
| 25 | 3 | mwcs-shanghai-2015 | milestone | 0d | 2015-11-03 A | 2015-11-03 A |  | 100% | start no earlier than 2015-11-03 |

Notes:
- 2: 测试UWB定位性能
- 3: 查阅北阳激光扫描测距仪资料
- 4: 配置网络和通信协议
- 5: 查阅mrpt资料并编译mrpt库 / 发现mrpt库中的几个bug…… / 测试lidar相关的example和tutorial程序
- 6: 实现mrpt的icp-slam算法 / 又发现mrpt库中的bug！ / 编程修改之
- 7: 编程实现holonomic的local_navigation效果尚可 / 编程测试a_star的global_planner效果欠佳
- 8: 修改底盘从全向轮改为差分轮
- 9: 恢复重建mrpt的mapping功能等 / 综合测试
- 11: 安装并查阅linux和ros平台的资料
- 12: 实现在ros平台上与激光雷达的连接
- 13: 用hector-slam取代原有的icp-slam算法 / 完成了小车的网络通信和串口通信两种方式
- 14: 配置了navigation和exploration/ 编程修改了一个关于createTimer的多线程bug
- 15: 编写改进手柄控制的驱动
- 16: 实现全局导航与局部导航功能
- 17: 激光粒子去噪
- 18: 优化成本地图的避障算法
- 19: 地图边走边创建，地图充电原点，小车位置记录，按钮与命令衔接
- 20: ros/rviz显示操作的插件 / 实现按钮控制发送topic以及调用service
- 21: 时序和时间测试
- 22: 用amcl的monte_carlo定位来恢复机器人绑架问题 / failed!
- 23: 探索与自主建图 / 实现同时导航与建图的功能
- 24: 代码整理，把各种类型的.launch文件一起通过环境变量整合到svn服务器。
- 25: 上海工博会

| ID | WBS | Task | Type | Duration | Start | Finish | Predecessors | Complete | Constraint |
| --- | --- | --- | --- | --- | --- | --- | --- | --- | --- |
| 26 | 4 | **chassis_ros** |  | 51d | 2015-09-18 A | 2015-11-30 A |  | 100% |  |
| 27 | 4.1 | design_and_assembly |  | 4d | 2015-09-18 A | 2015-09-24 A |  | 100% | start no earlier than 2015-09-18 |
| 28 | 4.2 | glass_detection |  | 5d | 2015-09-21 A | 2015-09-28 A |  | 100% | start no earlier than 2015-09-21 |
| 29 | 4.3 | kidnap_rescue |  | 15d | 2015-10-12 A | 2015-10-30 A | 22 | 100% |  |
| 30 | 4.4 | control_protocol |  | 10d | 2015-11-02 A | 2015-11-13 A | 29 | 100% |  |
| 31 | 4.5 | system_testing |  | 20d | 2015-10-19 A | 2015-11-16 A |  | 100% | start no earlier than 2015-10-19 |
| 32 | 4.6 | document_release |  | 10d | 2015-11-16 A | 2015-11-30 A | 31, 30 | 100% |  |
| 33 | 5 | sr_show-shanghai-2015 | milestone | 0d | 2015-12-10 A | 2015-12-10 A |  | 100% | start no earlier than 2015-11-03 |
| 34 | 6 | **extent_ros** |  | 40d | 2015-11-30 A | 2016-01-25 A | 26 | 100% |  |
| 35 | 6.1 | sr_show_warmup |  | 10d | 2015-11-30 A | 2015-12-14 A |  | 100% | finish no earlier than 2015-12-09 |
| 36 | 6.2 | mapping_2.5D |  | 5d | 2015-11-30 A | 2015-12-07 A |  | 100% |  |
| 37 | 6.3 | servo_odometry |  | 5d | 2015-12-14 A | 2015-12-18 A | 35, 36 | 100% |  |
| 38 | 6.4 | imu_odometry |  | 3d | 2015-12-21 A | 2015-12-24 A | 37 | 100% |  |
| 39 | 6.5 | hall_odometry |  | 6d | 2015-12-24 A | 2016-01-01 A | 38 | 100% |  |
| 40 | 6.6 | pose_follower |  | 13d | 2016-01-01 A | 2016-01-20 A | 39 | 100% |  |
| 41 | 6.7 | rviz_serial |  | 10d | 2015-11-30 A | 2015-12-14 A |  | 100% |  |
| 42 | 6.8 | rviz_socket |  | 10d | 2015-12-14 A | 2015-12-28 A | 41 | 100% |  |
| 43 | 6.9 | rviz_html5 |  | 20d | 2015-12-28 A | 2016-01-25 A | 42 | 100% |  |
| 44 | 7 | ces-lasvagas-2016 | milestone | 0d | 2015-11-30 A | 2016-01-06 A |  | 100% | start no earlier than 2015-11-03 |
| 45 | 8 | caesar-lasvagas-2016 | milestone | 0d | 2015-11-30 A | 2016-02-07 A |  | 100% | start no earlier than 2015-11-03 |
| 46 | 9 | **outdoor_ros** |  | 91d | 2016-01-01 A | 2016-05-06 A | 39 | 100% |  |
| 47 | 9.1 | octomap_mapping |  | 5d | 2016-01-01 A | 2016-01-08 A |  | 100% |  |
| 48 | 9.2 | lidar_skeleton |  | 10d | 2016-01-20 A | 2016-02-03 A | 40 | 100% | start no earlier than 2015-09-29 |
| 49 | 9.3 | chassis_assembly |  | 9d | 2016-01-25 A | 2016-02-05 A | 43 | 100% | start no earlier than 2015-09-29 |
| 50 | 9.4 | web_tools |  | 10d | 2016-02-14 A | 2016-02-26 A |  | 100% | start no earlier than 2016-02-14 |
| 51 | 9.5 | people_tracker |  | 20d | 2016-02-26 A | 2016-03-25 A | 50 | 100% |  |
| 52 | 9.6 | slam_tilt |  | 20d | 2016-03-25 A | 2016-04-22 A | 51 | 100% | start no earlier than 2015-09-29 |
| 53 | 9.7 | omni_wheels |  | 10d | 2016-04-22 A | 2016-05-06 A |  | 100% | start no earlier than 2015-10-27 |

Notes:
- 27: 小车设计组装
- 28: 玻璃探测
- 29: 机器人绑架问题用amcl有困难；转而指向了全局定位问题。
- 30: 与控制板的通信协议
- 31: 系统测试 / 要写测试用例
- 32: 编写项目文档
- 33: 上海服务机器人展
- 35: 展会准备，测试工作
- 36: 多探头的2.5D维建图
- 37: 伺服电机编码反馈
- 38: 惯性导航速度加速度反馈 / hector_localization
- 39: 用霍尔传感器发布里程计数据
- 40: 激光跟随
- 41: 通信协议
- 42: 通信协议
- 43: 通信协议
- 44: 上海服务机器人展
- 45: 酒店新年活动
- 47: 八叉树slam定位建图
- 48: 倾斜与斜向定位建图
- 49: 底盘安装
- 50: 基本网页控制
- 51: 人物跟随
- 52: 倾斜与斜向定位建图
- 53: 全向轮

| ID | WBS | Task | Type | Duration | Start | Finish | Predecessors | Complete | Remaining | Total slack | Free slack | Constraint | Resources | Work | Actual work | 任务 |
| --- | --- | --- | --- | --- | --- | --- | --- | --- | --- | --- | --- | --- | --- | --- | --- | --- |
| 54 | 10 | **maintenance** |  | 60d | 2016-05-06 A | 2016-07-29 A | 46 | 100% |  |  |  |  |  |  |  |  |
| 55 | 10.1 | release-1.1.1.1_beta |  | 10d | 2016-05-06 A | 2016-05-20 A |  | 100% |  |  |  |  |  |  |  |  |
| 56 | 10.2 | imu_ekf |  | 20d | 2016-05-20 A | 2016-06-17 A | 55 | 100% |  |  |  |  |  |  |  |  |
| 57 | 10.3 | release-1.1.1.3_beta |  | 10d | 2016-06-17 A | 2016-07-01 A | 56 | 100% |  |  |  |  |  |  |  |  |
| 58 | 10.4 | html5_websocket |  | 15d | 2016-07-01 A | 2016-07-22 A | 57 | 100% |  |  |  |  |  |  |  |  |
| 59 | 10.5 | clear_costmap_recovery |  | 4d | 2016-07-25 A | 2016-07-29 A | 58 | 100% |  |  |  |  |  |  |  |  |
| 60 | 11 | pokemon go | milestone | 0d | 2016-08-01 A | 2016-08-01 A |  | 100% |  |  |  | start no earlier than 2016-07-25 |  |  |  |  |
| 61 | 12 | **lidar_forklift** |  | 76d? | 2016-08-01 A | 2016-11-22 | 60 | 30% | 53.44d? | 0d |  |  | 仇隽挺; 陈新春; 张邺; 韩立芹; 陈豪 | 4832h | 807h | 激光叉车项目 |
| 62 | 12.1 | plc_controller |  | 6d | 2016-08-01 A | 2016-08-09 A |  | 100% |  |  |  |  | 陈新春; 仇隽挺 | 96h | 96h | 调试PLC控制器 |
| 63 | 12.2 | cable_structure |  | 9d | 2016-08-09 A | 2016-08-22 A | 62 | 100% |  |  |  |  | 仇隽挺; 张邺 | 144h | 144h | 重新接线结构 |
| 64 | 12.3 | direct_communication |  | 6d | 2016-08-22 A | 2016-08-30 A | 63 | 100% |  |  |  |  | 仇隽挺; 张邺 | 96h | 96h | 通信直连测试 |
| 65 | 12.4 | chassis_zoe |  | 14d? | 2016-09-07 A | 2016-09-28 | 64 | 38% | 8.75d? | 0d |  |  | 陆亚辉; 仇隽挺 | 224h | 84h | 改进佐伊号 |
| 66 | 12.5 | hector_mapping |  | 7d? | 2016-09-28 | 2016-10-13 | 65 |  |  | 28d |  |  | 张邺; 仇隽挺 | 112h |  | hector建图 |
| 67 | 12.6 | teb_local_planner |  | 7d? | 2016-09-28 | 2016-10-13 | 65 |  |  | 0d |  |  | 韩立芹; 张邺 | 112h |  | 本地路径规划 |
| 68 | 12.7 | plc_replacement |  | 7d? | 2016-09-28 | 2016-10-13 | 65 |  |  | 0d |  |  | 陈新春; 仇隽挺 | 112h |  | 重新设置PLC |
| 69 | 12.8 | drive_aqmd |  | 7d? | 2016-08-09 A | 2016-10-20 | 59, 68 | 25% | 5.25d? | 22.75d |  |  | 仇隽挺; 张邺 | 112h | 28h | 调试驱动器 |
| 70 | 12.9 | robot_localization |  | 7d? | 2016-10-13 | 2016-10-24 | 67 |  |  | 0d |  |  | 韩立芹; 张邺 | 112h |  | 多传感器定位 |
| 71 | 12.10 | chassis_miniqiu |  | 21d? | 2016-08-30 A | 2016-10-25 | 64, 65 | 25% | 15.75d? | 19.25d |  |  | 仇隽挺; 张邺 | 336h | 84h | 制作小球号 |
| 72 | 12.11 | lift_testing |  | 7d? | 2016-10-24 | 2016-11-02 | 70 |  |  | 0d |  |  | 陈豪; 仇隽挺 | 112h |  | 叉齿升降测试 |
| 73 | 12.12 | navigation_testing |  | 14d? | 2016-11-02 | 2016-11-22 | 72 |  |  | 0d |  |  | 陈豪; 仇隽挺 | 224h |  | 导航初步调试 |
| 74 | 13 | miniqiu_platform | milestone | 0d | 2016-10-07 | 2016-10-07 |  |  |  | 32.12d |  | start no earlier than 2016-10-07 |  |  |  | 搭建调试平台 |
| 75 | 14 | **ros_org** |  | 45d? | 2016-08-01 A | 2016-10-10 | 60 | 71% | 13.06d? | 31d |  |  | 韩立芹; 陆亚辉; 潘力澜; 张邺; 秦伟明; 陈新春; 仇隽挺 | 5000h | 2116h | 系统主线框架 |
| 76 | 14.1 | chassis_qiuqiu |  | 3d | 2016-08-01 A | 2016-08-04 A |  | 100% |  |  |  |  | 陆亚辉; 仇隽挺 | 48h | 48h | 改进仇仇号 |
| 77 | 14.2 | speech_commands |  | 6d | 2016-08-04 A | 2016-08-12 A | 76 | 100% |  |  |  |  | 陈新春; 陆亚辉 | 96h | 96h | 语音指令 |
| 78 | 14.3 | release_github |  | 11d | 2016-08-01 A | 2016-08-16 A |  | 100% |  |  |  |  | 张邺; 韩立芹 | 88h | 88h | 代码仓库发布 |
| 79 | 14.4 | rosbridge_tcp |  | 1d | 2016-08-17 A | 2016-08-18 A | 78 | 100% |  |  |  | start no earlier than 2016-08-17 | 张邺; 韩立芹 | 8h | 8h | 通信json协议 |
| 80 | 14.5 | visual_odometry |  | 14d | 2016-08-01 A | 2016-08-19 A |  | 100% |  |  |  |  | 潘力澜 | 112h | 112h | 视觉里程计 |
| 81 | 14.6 | image_transport |  | 7d | 2016-08-12 A | 2016-08-23 A | 77 | 100% |  |  |  |  | 陆亚辉; 潘力澜 | 112h | 112h | wifi图传 |
| 82 | 14.7 | costmap_inflation |  | 2d | 2016-08-22 A | 2016-08-24 A |  | 100% |  |  |  | start no earlier than 2016-08-22 | 韩立芹; 张邺 | 32h | 32h | 威尔2之bug#49 |
| 83 | 14.8 | drive_aqmd |  | 7d | 2016-08-16 A | 2016-08-25 A | 78, 76 | 100% |  |  |  |  | 潘力澜; 张邺 | 112h | 112h | 艾思控驱动器 |
| 84 | 14.9 | gmapping_pose |  | 2d | 2016-08-24 A | 2016-08-26 A |  | 100% |  |  |  | start no earlier than 2016-08-22 | 韩立芹; 张邺 | 32h | 32h | 威尔2之bug#40 |
| 85 | 14.10 | lidar_noise |  | 4d | 2016-08-22 A | 2016-08-26 A |  | 100% |  |  |  | start no earlier than 2016-08-22 | 仇隽挺; 韩立芹 | 64h | 64h | 激光反射噪声 |
| 86 | 14.11 | remote_update |  | 9d | 2016-08-18 A | 2016-08-31 A | 79 | 100% |  |  |  |  | 张邺; 韩立芹 | 144h | 144h | 远程更新 |
| 87 | 14.12 | vedio_transport |  | 6d | 2016-08-23 A | 2016-08-31 A | 81 | 100% |  |  |  |  | 陆亚辉; 陈新春 | 96h | 96h | wifi视频流 |
| 88 | 14.13 | apache_server |  | 2d | 2016-08-31 A | 2016-09-02 A | 86 | 100% |  |  |  |  | 陈新春; 张邺 | 32h | 32h | 网页服务器 |
| 89 | 14.14 | terminal_controller |  | 14d | 2016-08-15 A | 2016-09-02 A | 76, 77 | 100% |  |  |  |  | 陈新春; 陆亚辉 | 224h | 224h | 操控终端 |
| 90 | 14.15 | drive_hinson |  | 3d | 2016-08-31 A | 2016-09-05 A | 86 | 100% |  |  |  |  | 仇隽挺; 张邺 | 48h | 48h | 兴颂驱动器 |
| 91 | 14.16 | speech_recognition |  | 7d | 2016-08-31 A | 2016-09-09 A | 87 | 100% |  |  |  |  | 陆亚辉; 陈新春 | 112h | 112h | 语音识别 |
| 92 | 14.17 | chassis_minihui |  | 7d | 2016-08-31 A | 2016-09-09 A | 87 | 100% |  |  |  |  | 陆亚辉; 仇隽挺 | 112h | 112h | 制作小灰号 |
| 93 | 14.18 | host_pa3_ttyS |  | 6d | 2016-09-02 A | 2016-09-12 A | 88 | 100% |  |  |  |  | 张邺; 韩立芹 | 96h | 96h | pa3开机串口 |
| 94 | 14.19 | orb_slam |  | 17d | 2016-08-19 A | 2016-09-13 A | 80 | 100% |  |  |  |  | 潘力澜 | 136h | 136h | 视觉slam算法 |
| 95 | 14.20 | rosbridge_driver |  | 7d | 2016-09-12 A | 2016-09-22 A | 93 | 100% |  |  |  | start no earlier than 2016-09-07 | 张邺 | 56h | 56h | 通用硬件驱动 |
| 96 | 14.21 | system_diagnostics |  | 15d | 2016-08-31 A | 2016-09-22 A | 86 | 100% |  |  |  |  | 韩立芹; 张邺 | 240h | 240h | 系统自检 |
| 97 | 14.22 | terminal_navigator |  | 21d? | 2016-08-31 A | 2016-09-30 | 86, 87 | 25% | 15.75d? | 32d | 0d |  | 陈新春; 张邺 | 336h | 84h | 导航终端 |
| 98 | 14.23 | orb_localization |  | 14d? | 2016-09-13 A | 2016-10-10 | 94 | 25% | 10.5d? | 31d |  |  | 潘力澜 | 112h | 28h | 视觉定位算法 |
| 99 | 14.24 | android_ndk |  | 1d? | 2016-08-01 | 2016-08-02 |  |  |  | 75d |  |  | 秦伟明; 张邺 | 16h |  | 安卓ros包调研 |
| 100 | 14.25 | qt_bridge |  | 1d? | 2016-08-01 A | 2016-08-02 |  | 25% | 0.75d? | 75d |  |  | 韩立芹; 张邺 | 16h | 4h | 调度系统衔接 |
| 101 | 14.26 | pocket_sphnix |  | 1d? | 2016-09-19 | 2016-09-20 |  |  |  | 39d | 0d | start no earlier than 2016-09-19 |  |  |  | 本地语音识别 |
| 102 | 14.27 | speech_semantic |  | 1d? | 2016-09-20 | 2016-09-21 | 91, 101 |  |  | 39d | 0d |  |  |  |  | 语义解析 |
| 103 | 14.28 | speech_tts |  | 1d? | 2016-09-21 | 2016-09-22 | 102 |  |  | 39d |  |  |  |  |  | 语音合成 |
| 104 | 14.29 | dhcp_ifconfig |  | 1d? | 2016-09-12 | 2016-09-13 | 93 |  |  | 45d |  |  |  |  |  | 动态ip方案 |
| 105 | 14.30 | local_oscilliation |  | 1d? | 2016-09-12 | 2016-09-13 | 93 |  |  | 45d |  |  |  |  |  | 振荡遇人乱摆动 |
| 106 | 14.31 | time_position_mode |  | 1d? | 2016-09-12 | 2016-09-13 | 93 |  |  | 45d |  |  |  |  |  | 背后推速度失控 |
| 107 | 14.32 | odom_feedback |  | 1d? | 2016-09-12 | 2016-09-13 | 93 |  |  | 45d |  |  |  |  |  | 卡脚等速度响应 |
| 108 | 14.33 | navigation_improvement |  | 1d? | 2016-09-22 | 2016-09-23 | 96 |  |  | 37.62d |  |  |  |  |  | 导航包改进 |
| 109 | 14.34 | terminal_configurator |  | 1d? | 2016-09-30 | 2016-10-08 | 97 |  |  | 32d |  |  |  |  |  | 配置终端 |
| 110 | 14.35 | motor_servo |  | 1d? | 2016-09-05 | 2016-09-06 | 90 |  |  | 50d |  |  |  |  |  | 绝对编码电机 |
| 111 | 14.36 | velocity_smooth |  | 1d? | 2016-09-22 | 2016-09-23 | 96 |  |  | 35.62d | 0d |  |  |  |  | 速度平滑 |
| 112 | 14.37 | velocity_follow |  | 1d? | 2016-09-23 | 2016-09-26 | 111 |  |  | 35.62d | 0d |  |  |  |  | 速度跟随 |
| 113 | 14.38 | velocity_filter |  | 1d? | 2016-09-26 | 2016-09-27 | 112 |  |  | 35.62d |  |  |  |  |  | 速度滤波 |
| 114 | 14.39 | chassis_dahui |  | 1d? | 2016-08-01 | 2016-08-02 |  |  |  | 75d |  |  |  |  |  | 改进大灰号 |
| 115 | 14.40 | host_rk3288 |  | 1d? | 2016-08-01 | 2016-08-02 |  |  |  | 75d |  |  |  |  |  | rk3288板测试 |
| 116 | 14.41 | lidar_warning |  | 1d? | 2016-08-01 | 2016-08-02 |  |  |  | 75d |  |  |  |  |  | 激光区域告警 |
| 117 | 14.42 | skeleton_detection |  | 1d? | 2016-08-01 | 2016-08-02 |  |  |  | 75d |  |  |  |  |  | 骨架识别 |
| 118 | 14.43 | face_detection |  | 1d? | 2016-08-01 | 2016-08-02 |  |  |  | 75d |  |  |  |  |  | 人脸识别 |
| 119 | 14.44 | leg_detection |  | 1d? | 2016-08-01 | 2016-08-02 |  |  |  | 75d |  |  |  |  |  | 人腿识别 |
| 120 | 14.45 | terminal_architecture |  | 1d? | 2016-08-01 | 2016-08-02 |  |  |  | 75d |  |  |  |  |  | 通信架构设计 |
| 121 | 14.46 | power_protection |  | 1d? | 2016-08-01 | 2016-08-02 |  |  |  | 75d |  |  |  |  |  | 电源与空气开关 |
| 122 | 14.47 | motor_braker |  | 1d? | 2016-08-01 | 2016-08-02 |  |  |  | 75d |  |  |  |  |  | 电机刹车 |
| 123 | 14.48 | sensor_bumper |  | 1d? | 2016-08-01 | 2016-08-02 |  |  |  | 75d |  |  |  |  |  | 碰撞传感器 |

Notes:
- 59: 导航global_plan规划失败后后清除obstacle_layer的障碍继续尝试。
- 64: usb转485驱动器不稳定
- 85: 激光干扰导致机器人导航卡住，具体原因有待继续检查下去，目前没有解决方案。
- 95: 等待吴兵完成协议制定 / 顺便解决stm32通信时可能的命令不执行问题
- 96: 联网的无线有线优先级；激光安装不平；imu安装不稳……
- 97: 界面急停大图案
- 99: 开始时间等秦伟明完成送餐的收尾工作
- 100: 需要许江帆组完成qt框架
- 108: 处理目标点特别近后不走动，膨胀层会消失等navigation包的固有bug

| ID | WBS | Task | Duration | Start | Finish | Predecessors | Total slack | 任务 |
| --- | --- | --- | --- | --- | --- | --- | --- | --- |
| 124 | 14.49 | sensor_sonar | 1d? | 2016-08-01 | 2016-08-02 |  | 75d | 声纳传感器 |
| 125 | 14.50 | sensor_infrared | 1d? | 2016-08-01 | 2016-08-02 |  | 75d | 红外传感器 |
| 126 | 14.51 | rplidar | 1d? | 2016-08-01 | 2016-08-02 |  | 75d |  |
| 127 | 14.52 | delidar | 1d? | 2016-08-01 | 2016-08-02 |  | 75d |  |
| 128 | 14.53 | velodyne | 1d? | 2016-08-01 | 2016-08-02 |  | 75d |  |
| 129 | 14.54 | rtabmap | 1d? | 2016-08-01 | 2016-08-02 |  | 75d |  |
| 130 | 14.55 | pcl | 1d? | 2016-08-01 | 2016-08-02 |  | 75d |  |
| 131 | 14.56 | map_input | 1d? | 2016-08-01 | 2016-08-02 |  | 75d |  |
| 132 | 14.57 | fall_prevention | 1d? | 2016-08-01 | 2016-08-02 |  | 75d | 防跌落方案 |
| 133 | 14.58 | emergency_break | 1d? | 2016-08-01 | 2016-08-02 |  | 75d |  |
| 134 | 14.59 | global_localization | 1d? | 2016-08-01 | 2016-08-02 |  | 75d |  |
| 135 | 14.60 | map_editor | 1d? | 2016-08-01 | 2016-08-02 |  | 75d | 地图编辑功能 |
| 136 | 14.61 | map_multi_layers | 1d? | 2016-08-01 | 2016-08-02 |  | 75d | 多地图结合 |
| 137 | 14.62 | use_elevator | 1d? | 2016-08-01 | 2016-08-02 |  | 75d | 进电梯 |
| 138 | 15 | **multi_robots** | 1d? | 2015-11-30 | 2015-12-01 | 26 | 251d |  |
| 139 | 15.1 | <新任务> | 1d? | 2015-11-30 | 2015-12-01 |  | 251d |  |
| 140 | 16 | **auto_docking** | 1d? | 2015-11-30 | 2015-12-01 | 26 | 251d |  |
| 141 | 16.1 | <新任务> | 1d? | 2015-11-30 | 2015-12-01 |  | 251d |  |

Notes:
- 138: 多机器人协同调度策略
- 140: 自主充电
